# XIP-ProjectPlan_V0.1.1

Schedule from MS Project, 2006-10-02 to 2007-10-01.
Washington University School of Medicine

## Calendars

- Standard: Mon-Fri 09:00-12:00, 13:00-17:30; Sat-Sun off. Exceptions (off unless hours are given): 2006-11-23 to 2006-11-24, 2006-12-25, 2007-01-01, 2007-01-15, 2007-05-28, 2007-07-04, 2007-09-03.

## Resources

| Resource | Group |
| --- | --- |
| Gianluca Paladini | SCR |
| Thomas Moeller | SCR |
| Daphne Yu | SCR |
| Klaus Engel | SCR |
| Lawrence Tarbox | ERL |
| Senior Developer (Dave or Sasi) | ERL |
| Junior Developer (Kris) | ERL |
| Steve Moore | ERL |
| Paul Koppel | ERL |
| Net Admin (Stan or Mike) | ERL |
| Siteman | WUSTL |
| Kitware |  |

## Schedule

| ID | WBS | Task | Duration | Start | Finish | Predecessors | Total slack | Free slack | Constraint | Deadline | Resources | Work |
| --- | --- | --- | --- | --- | --- | --- | --- | --- | --- | --- | --- | --- |
| 1 | 1 | **RSNA Demonstration** | 40.25d | 2006-10-02 | 2006-12-01 |  | 0d |  |  |  |  | 572h |
| 2 | 1.1 | **RSNA Demonstration Use Cases Document** | 8.31d | 2006-10-02 | 2006-10-12 |  | 3.39d | 0d |  |  |  | 36h |
| 3 | 1.1.1 | Edit | 57h | 2006-10-02 | 2006-10-12 |  | 3.39d | 0d |  |  | Lawrence Tarbox [50%]; Gianluca Paladini [25%]; Junior Developer (Kris) | 28h |
| 4 | 1.1.2 | Review | 2.29h | 2006-10-12 | 2006-10-12 | 3 | 3.39d |  |  |  | Lawrence Tarbox; Gianluca Paladini; Daphne Yu [50%]; Junior Developer (Kris) [50%]; Klaus Engel [50%]; Thomas Moeller [50%]; Senior Developer (Dave or Sasi) [50%] | 8h |
| 5 | 1.2 | **RSNA Demonstration Data Sets** | 10.54d | 2006-10-12 | 2006-10-30 | 2 | 13.89d |  |  | 2006-11-17 |  | 32h |
| 6 | 1.2.1 | Create | 83.33h | 2006-10-12 | 2006-10-27 |  | 13.89d | 0d |  |  | Lawrence Tarbox; Daphne Yu [10%]; Thomas Moeller [10%] | 25h |
| 7 | 1.2.2 | Review | 1h | 2006-10-27 | 2006-10-30 | 6 | 13.89d |  |  |  | Lawrence Tarbox; Daphne Yu; Gianluca Paladini; Junior Developer (Kris); Senior Developer (Dave or Sasi); Klaus Engel; Thomas Moeller | 7h |
| 8 | 1.3 | RSNA Demonstration Code | 168.33h | 2006-10-12 | 2006-11-14 | 2 | 3.39d |  |  | 2006-11-17 | Gianluca Paladini; Thomas Moeller; Daphne Yu; Lawrence Tarbox [50%]; Senior Developer (Dave or Sasi) | 400h |
| 9 | 1.4 | **RSNA Presentation Materials** | 21.47d | 2006-10-12 | 2006-11-14 |  | 6.06d |  |  | 2006-11-22 |  | 32h |
| 10 | 1.4.1 | Edit | 33.48h | 2006-10-12 | 2006-10-19 | 3 | 6.06d | 0d |  |  | Lawrence Tarbox [50%]; Gianluca Paladini [50%] | 24h |
| 11 | 1.4.2 | Review | 4.57h | 2006-10-19 | 2006-11-14 | 10, 4 | 6.06d |  |  |  | Gianluca Paladini; Lawrence Tarbox; Daphne Yu; Klaus Engel; Thomas Moeller; Junior Developer (Kris); Senior Developer (Dave or Sasi) | 8h |
| 12 | 1.5 | RSNA Booth Staffing | 36h | 2006-11-25 | 2006-12-01 | 11, 8 | 0d |  | must start on 2006-11-25 | 2006-12-01 | Gianluca Paladini; Lawrence Tarbox | 72h |
| 13 | 2 | **Project Preliminaries** | 49.42d | 2006-10-02 | 2006-12-15 |  | 47.73d |  |  |  |  | 544h |
| 14 | 2.1 | **1.1 Project Management Plan** | 4.65d | 2006-10-03 | 2006-10-10 |  | 230.68d |  |  |  |  | 48h |
| 15 | 2.1.1 | Edit | 32h | 2006-10-03 | 2006-10-09 |  | 230.68d | 0d |  |  | Lawrence Tarbox | 32h |
| 16 | 2.1.2 | Review | 4.54h | 2006-10-09 | 2006-10-10 | 15 | 230.68d |  |  |  | Daphne Yu; Gianluca Paladini; Junior Developer (Kris); Klaus Engel; Lawrence Tarbox; Paul Koppel [5%]; Senior Developer (Dave or Sasi); Thomas Moeller | 16h |
| 17 | 2.2 | **1.2 Communication Plan** | 5.41d | 2006-10-02 | 2006-10-09 |  | 230.96d |  |  |  |  | 16h |
| 18 | 2.2.1 | Edit | 8.33h | 2006-10-02 | 2006-10-03 |  | 230.96d | 0d |  |  | Lawrence Tarbox; Gianluca Paladini [20%] | 10h |
| 19 | 2.2.2 | Review | 5.91h | 2006-10-03 | 2006-10-09 | 18 | 230.96d |  |  |  | Net Admin (Stan or Mike) [3%]; Lawrence Tarbox; Gianluca Paladini | 6h |
| 20 | 2.3 | **1.4 Stakeholder Management Plan** | 33.13d | 2006-10-02 | 2006-11-20 |  | 203.25d |  |  |  |  | 32h |
| 21 | 2.3.1 | Edit | 36.36h | 2006-10-02 | 2006-11-16 |  | 203.25d | 0d |  |  | Lawrence Tarbox; Gianluca Paladini [10%] | 20h |
| 22 | 2.3.2 | Review | 3.43h | 2006-11-16 | 2006-11-20 | 21 | 203.25d |  |  |  | Gianluca Paladini; Lawrence Tarbox; Thomas Moeller; Daphne Yu; Junior Developer (Kris); Klaus Engel; Senior Developer (Dave or Sasi) | 12h |
| 23 | 2.4 | **1.5 Key Success Factors** | 31.99d | 2006-10-02 | 2006-11-17 |  | 204.39d |  |  |  |  | 32h |
| 24 | 2.4.1 | Edit | 36.15h | 2006-10-02 | 2006-10-20 |  | 204.39d | 0d |  |  | Junior Developer (Kris); Lawrence Tarbox [33%]; Gianluca Paladini [33%] | 20h |
| 25 | 2.4.2 | Review | 6.86h | 2006-10-20 | 2006-11-17 | 24 | 204.39d |  |  |  | Daphne Yu; Gianluca Paladini; Junior Developer (Kris); Klaus Engel; Lawrence Tarbox; Senior Developer (Dave or Sasi); Thomas Moeller | 12h |

Notes:
- 8: This demonstration will serve to illustrate the concept, to foster discussions of what the final deliverable could look like, to promote the ideas both within the caBIG community as well as within the broader in vivo imaging community. Due to the shortness of time, it will be created by cobbling together mostly existing code using a proprietary development framework, hence will not be totally made available to the public. However, the subsequent prototype code, derived in part from the demonstration will be made available to the public. Also, due to the shortness of time, it may not have all features desired for the final output. But it will be more than a mere mock up. The majority will be actually running, functional applications. Essentially, it will have whatever the team can incorporate into it within the fixed time period available.
- 20: Includes time to interact with stakeholders to develop this document

| ID | WBS | Task | Duration | Start | Finish | Predecessors | Total slack | Free slack | Resources | Work |
| --- | --- | --- | --- | --- | --- | --- | --- | --- | --- | --- |
| 26 | 2.5 | **2.1.1 Draft Use Cases Document** | 32.91d | 2006-10-02 | 2006-11-20 |  | 47.73d | 0d |  | 144h |
| 27 | 2.5.1 | Edit | 107.94h | 2006-10-02 | 2006-10-27 |  | 47.73d | 0d | Junior Developer (Kris); Lawrence Tarbox [40%]; Gianluca Paladini [10%]; Thomas Moeller [10%] | 92h |
| 28 | 2.5.2 | Review | 30.08h | 2006-10-27 | 2006-11-20 | 27 | 47.73d |  | Lawrence Tarbox; Thomas Moeller; Daphne Yu; Gianluca Paladini; Junior Developer (Kris); Klaus Engel; Senior Developer (Dave or Sasi) | 52h |
| 29 | 2.6 | **2.2.1 Draft Requirements and Specifications Document** | 8.5d | 2006-11-20 | 2006-12-05 | 26 | 47.73d | 0d |  | 96h |
| 30 | 2.6.1 | Edit | 28.41h | 2006-11-20 | 2006-12-04 |  | 47.73d | 0d | Lawrence Tarbox; Gianluca Paladini [25%]; Thomas Moeller [8%]; Daphne Yu [8%]; Klaus Engel [8%]; Senior Developer (Dave or Sasi) [33%]; Junior Developer (Kris) [33%]; Steve Moore [33%] | 60h |
| 31 | 2.6.2 | Review | 5.11h | 2006-12-04 | 2006-12-05 | 30 | 47.73d |  | Lawrence Tarbox; Daphne Yu; Gianluca Paladini; Junior Developer (Kris); Klaus Engel; Senior Developer (Dave or Sasi); Thomas Moeller; Steve Moore [5%] | 36h |
| 32 | 2.7 | **2.3.1 Draft UML Model** | 8d | 2006-12-05 | 2006-12-15 | 29 | 47.73d | 0d |  | 96h |
| 33 | 2.7.1 | Edit | 59.46h | 2006-12-05 | 2006-12-15 |  | 47.73d | 0d | Junior Developer (Kris); Lawrence Tarbox [66%]; Senior Developer (Dave or Sasi) [33%]; Daphne Yu [18%]; Gianluca Paladini [18%]; Klaus Engel [18%]; Thomas Moeller [18%] | 64h |
| 34 | 2.7.2 | Review | 4.57h | 2006-12-15 | 2006-12-15 | 33 | 47.73d |  | Junior Developer (Kris); Daphne Yu; Gianluca Paladini; Klaus Engel; Lawrence Tarbox; Senior Developer (Dave or Sasi); Thomas Moeller | 32h |
| 35 | 2.8 | Setup Build Environment | 211.64h | 2006-10-02 | 2006-11-09 |  | 53.87d | 0d | Paul Koppel; Net Admin (Stan or Mike) [50%]; Kitware [35%] | 80h |
| 36 | 3 | **Phase 1 - Convert Baseline to Open Source** | 91.48d | 2006-11-09 | 2007-04-02 | 35 | 53.87d |  |  | 1824h |
| 37 | 3.1 | **R1.1 Incorporate interactions with caGrid Architecture via the IVI Workspace Middleware** | 69.77d | 2006-11-09 | 2007-02-28 |  | 53.87d | 0d |  | 120h |
| 38 | 3.1.1 | Discussions with middleware team | 21.33h | 2006-11-09 | 2006-12-12 |  | 53.87d | 0d | Lawrence Tarbox [75%]; Siteman; Steve Moore [50%]; Net Admin (Stan or Mike) [75%] | 24h |
| 39 | 3.1.2 | Create Test | 97.82h | 2006-12-12 | 2007-02-28 | 38 | 53.87d |  | Junior Developer (Kris); Siteman [25%] | 40h |
| 40 | 3.1.3 | Code and Debug | 65.23h | 2006-12-12 | 2007-01-05 | 38 | 58.13d | 0d | Junior Developer (Kris); Lawrence Tarbox [25%] | 52h |
| 41 | 3.1.4 | Review | 4h | 2007-01-05 | 2007-02-22 | 40 | 58.13d |  | Senior Developer (Dave or Sasi); Junior Developer (Kris) | 4h |
| 42 | 3.2 | **2.1.2 Final Use Case Document** | 11.8d | 2006-11-20 | 2006-12-08 | 26 | 188.21d | 162.86d |  | 48h |
| 43 | 3.2.1 | Edit | 37h | 2006-11-20 | 2006-12-08 |  | 188.21d | 0d | Junior Developer (Kris); Gianluca Paladini [66%]; Lawrence Tarbox [66%] | 28h |
| 44 | 3.2.2 | Review | 2.86h | 2006-12-08 | 2006-12-08 | 43 | 188.21d |  | Lawrence Tarbox; Thomas Moeller; Daphne Yu; Gianluca Paladini; Junior Developer (Kris); Klaus Engel; Senior Developer (Dave or Sasi) | 20h |
| 45 | 3.3 | **2.2.2 Final Requirements and Specifications Document** | 13.16d | 2006-12-06 | 2006-12-27 | 29 | 180.17d |  |  | 32h |
| 46 | 3.3.1 | Edit | 16h | 2006-12-06 | 2006-12-27 |  | 180.17d | 0d | Lawrence Tarbox; Gianluca Paladini | 16h |
| 47 | 3.3.2 | Review | 2.27h | 2006-12-27 | 2006-12-27 | 46 | 180.17d |  | Daphne Yu; Gianluca Paladini; Junior Developer (Kris); Klaus Engel; Lawrence Tarbox; Senior Developer (Dave or Sasi); Thomas Moeller; Steve Moore [5%] | 16h |
| 48 | 3.4 | **2.3.2 Final UML Model** | 9.91d | 2006-12-20 | 2007-01-08 | 32 | 170.64d | 145.3d |  | 48h |
| 49 | 3.4.1 | Edit | 32h | 2006-12-20 | 2007-01-08 |  | 170.64d | 0d | Lawrence Tarbox | 32h |
| 50 | 3.4.2 | Review | 2.29h | 2007-01-08 | 2007-01-08 | 49 | 170.64d |  | Junior Developer (Kris); Daphne Yu; Gianluca Paladini; Klaus Engel; Lawrence Tarbox; Senior Developer (Dave or Sasi); Thomas Moeller | 16h |

Notes:
- 42: Includes interactions to gain Adopter and Cross Cutting Workspace Review and Acceptance
- 45: Includes interactions to gain Adopter and Cross Cutting Workspace Review and Acceptance
- 48: Includes interactions to gain Adopter and Cross Cutting Workspace Review and Acceptance

| ID | WBS | Task | Duration | Start | Finish | Predecessors | Total slack | Free slack | Resources | Work |
| --- | --- | --- | --- | --- | --- | --- | --- | --- | --- | --- |
| 51 | 3.5 | **2.4.1 Draft API and API Documentation** | 3.23d | 2006-12-15 | 2006-12-21 | 32 | 47.73d | 0d |  | 72h |
| 52 | 3.5.1 | Edit | 23.53h | 2006-12-15 | 2006-12-20 |  | 47.73d | 0d | Junior Developer (Kris); Senior Developer (Dave or Sasi) [33%]; Lawrence Tarbox [33%]; Gianluca Paladini [18%]; Thomas Moeller [18%]; Daphne Yu [18%]; Klaus Engel [18%] | 56h |
| 53 | 3.5.2 | Review | 2.29h | 2006-12-20 | 2006-12-21 | 52 | 47.73d |  | Daphne Yu; Gianluca Paladini; Junior Developer (Kris); Klaus Engel; Lawrence Tarbox; Senior Developer (Dave or Sasi); Thomas Moeller | 16h |
| 54 | 3.6 | **2.12.1 Draft Design Documents** | 10.15d | 2006-12-21 | 2007-01-08 | 51 | 47.73d | 0d |  | 96h |
| 55 | 3.6.1 | Edit | 42.86h | 2006-12-21 | 2006-12-29 |  | 47.73d | 0d | Daphne Yu; Gianluca Paladini [40%]; Junior Developer (Kris) [20%]; Klaus Engel [40%]; Lawrence Tarbox [20%]; Senior Developer (Dave or Sasi) [20%]; Thomas Moeller | 60h |
| 56 | 3.6.2 | Review | 9.31h | 2006-12-29 | 2007-01-08 | 55 | 47.73d |  | Daphne Yu; Gianluca Paladini; Junior Developer (Kris); Klaus Engel; Lawrence Tarbox; Senior Developer (Dave or Sasi); Thomas Moeller | 36h |
| 57 | 3.7 | **2.6.1 Draft Test Approach Document with Requirements Traceability Matrix** | 1.14d | 2007-01-08 | 2007-01-10 | 54 | 47.73d | 0d |  | 32h |
| 58 | 3.7.1 | Edit | 4.57h | 2007-01-08 | 2007-01-09 |  | 47.73d | 0d | Daphne Yu [50%]; Gianluca Paladini [50%]; Junior Developer (Kris) [50%]; Klaus Engel [50%]; Lawrence Tarbox; Senior Developer (Dave or Sasi) [50%]; Thomas Moeller [50%] | 16h |
| 59 | 3.7.2 | Review | 4.57h | 2007-01-09 | 2007-01-10 | 58 | 47.73d |  | Daphne Yu [50%]; Gianluca Paladini [50%]; Junior Developer (Kris) [50%]; Klaus Engel [50%]; Lawrence Tarbox; Senior Developer (Dave or Sasi) [50%]; Thomas Moeller [50%] | 16h |
| 60 | 3.8 | **2.9 Prototype Code - Phase 1** | 41.33d | 2007-01-10 | 2007-03-14 | 57 | 47.73d | 0d |  | 1232h |
| 61 | 3.8.1 | **R1.4 DICOM query/retrieve, receive, store, display of image data** | 4d | 2007-01-22 | 2007-01-26 |  | 76.7d | 0d |  | 16h |
| 62 | 3.8.1.1 | Create Test | 6h | 2007-01-25 | 2007-01-26 |  | 76.7d |  | Daphne Yu | 6h |
| 63 | 3.8.1.2 | Code and Debug | 6h | 2007-01-22 | 2007-01-22 |  | 78.9d | 0d | Daphne Yu | 6h |
| 64 | 3.8.1.3 | Review | 4h | 2007-01-24 | 2007-01-25 | 63 | 77.58d |  | Daphne Yu; Thomas Moeller | 4h |
| 65 | 3.8.2 | **R2.1 Rapid prototyping IDE** | 9.98d | 2007-01-16 | 2007-01-30 |  | 76.34d |  |  | 64h |
| 66 | 3.8.2.1 | Create Test | 27h | 2007-01-18 | 2007-01-24 |  | 80.81d |  | Thomas Moeller; Junior Developer (Kris) [50%] | 24h |
| 67 | 3.8.2.2 | Code and Debug | 64.48h | 2007-01-16 | 2007-01-30 |  | 76.34d | 0d | Thomas Moeller; Lawrence Tarbox [33%] | 32h |
| 68 | 3.8.2.3 | Review | 4h | 2007-01-30 | 2007-01-30 | 67 | 76.34d |  | Thomas Moeller; Lawrence Tarbox | 8h |
| 69 | 3.8.3 | **R2.2 Access to ITK and VTK** | 11.33d | 2007-01-10 | 2007-01-29 |  | 47.73d |  |  | 160h |
| 70 | 3.8.3.1 | **R2.2.1 Access to ITK** | 2.75d | 2007-01-10 | 2007-01-16 |  | 67.5d | 0.79d |  | 24h |
| 71 | 3.8.3.1.1 | Create Test | 8h | 2007-01-12 | 2007-01-16 |  | 67.5d |  | Thomas Moeller | 8h |
| 72 | 3.8.3.1.2 | Code and Debug | 12h | 2007-01-10 | 2007-01-11 |  | 68.5d | 0d | Thomas Moeller | 12h |
| 73 | 3.8.3.1.3 | Review | 2h | 2007-01-11 | 2007-01-12 | 72 | 68.5d |  | Thomas Moeller; Daphne Yu | 4h |
| 74 | 3.8.3.2 | **R2.2.2 Access to VTK** | 11.33d | 2007-01-10 | 2007-01-29 |  | 47.73d | 0d |  | 136h |
| 75 | 3.8.3.2.1 | Create Test | 27.33h | 2007-01-16 | 2007-01-19 |  | 52.9d |  | Junior Developer (Kris); Lawrence Tarbox | 40h |
| 76 | 3.8.3.2.2 | Code and Debug | 88h | 2007-01-10 | 2007-01-26 |  | 47.73d | 0d | Junior Developer (Kris); Lawrence Tarbox [75%]; Kitware [75%]; Klaus Engel [25%] | 88h |
| 77 | 3.8.3.2.3 | Review | 2.67h | 2007-01-26 | 2007-01-29 | 76 | 47.73d |  | Lawrence Tarbox; Junior Developer (Kris); Senior Developer (Dave or Sasi) | 8h |

Notes:
- 60: The prototype code will be derived from the demonstration code. Those portions of the demonstration needed to fill the SOW requirements that originally contain proprietary code will be replaced with open source equivalents. In many cases, the proprietary code will simply be refactored into the open source code, saving development and testing time. As with the demonstration code, the prototype code may not have all requirements working, but will serve as a solid foundation for adding the final touches.

| ID | WBS | Task | Duration | Start | Finish | Predecessors | Total slack | Free slack | Resources | Work |
| --- | --- | --- | --- | --- | --- | --- | --- | --- | --- | --- |
| 78 | 3.8.4 | **R2.3 Support multiple integration solutions - Phase 1** | 3.62d | 2007-01-22 | 2007-01-26 |  | 78.28d |  |  | 8h |
| 79 | 3.8.4.1 | **R2.3.1 Stand-alone** | 3.62d | 2007-01-22 | 2007-01-26 |  | 78.28d |  |  | 8h |
| 80 | 3.8.4.1.1 | Create Test | 3h | 2007-01-26 | 2007-01-26 |  | 78.28d |  | Daphne Yu | 3h |
| 81 | 3.8.4.1.2 | Code and Debug | 3h | 2007-01-22 | 2007-01-23 |  | 79.46d | 0d | Daphne Yu | 3h |
| 82 | 3.8.4.1.3 | Review | 2h | 2007-01-24 | 2007-01-25 | 81 | 79.4d |  | Daphne Yu; Thomas Moeller | 2h |
| 83 | 3.8.5 | R2.4 Early access | 49.23h | 2007-01-10 | 2007-01-22 |  | 82.66d |  | Daphne Yu; Gianluca Paladini [25%]; Lawrence Tarbox [25%]; Paul Koppel [75%]; Net Admin (Stan or Mike) [25%] | 40h |
| 84 | 3.8.6 | **R3.1 Support multiple pixel formats** | 2.66d | 2007-01-10 | 2007-01-16 |  | 55.9d | 0d |  | 8h |
| 85 | 3.8.6.1 | Create Test | 3h | 2007-01-12 | 2007-01-16 |  | 55.9d |  | Daphne Yu | 3h |
| 86 | 3.8.6.2 | Code and Debug | 3h | 2007-01-10 | 2007-01-10 |  | 56.28d | 0d | Daphne Yu | 3h |
| 87 | 3.8.6.3 | Review | 2h | 2007-01-10 | 2007-01-12 | 86 | 56.28d |  | Daphne Yu; Klaus Engel | 2h |
| 88 | 3.8.7 | **R3.2 Support multiple data input methods** | 32d | 2007-01-16 | 2007-03-05 | 84 | 54.41d |  |  | 128h |
| 89 | 3.8.7.1 | **DICOM via network** | 0.88d | 2007-01-19 | 2007-01-22 |  | 77.09d | 0d |  | 8h |
| 90 | 3.8.7.1.1 | Create Test | 3h | 2007-01-19 | 2007-01-22 |  | 77.09d |  | Daphne Yu | 3h |
| 91 | 3.8.7.1.2 | Code and Debug | 3h | 2007-01-19 | 2007-01-19 |  | 77.34d | 0d | Daphne Yu | 3h |
| 92 | 3.8.7.1.3 | Review | 2h | 2007-01-19 | 2007-01-19 | 91 | 77.34d |  | Daphne Yu; Gianluca Paladini | 2h |
| 93 | 3.8.7.2 | **DICOM via media** | 0.88d | 2007-01-16 | 2007-01-16 |  | 55.53d | 0d |  | 8h |
| 94 | 3.8.7.2.1 | Create Test | 3h | 2007-01-16 | 2007-01-16 |  | 55.53d |  | Daphne Yu | 3h |
| 95 | 3.8.7.2.2 | Code and Debug | 3h | 2007-01-16 | 2007-01-16 |  | 55.9d | 0d | Daphne Yu | 3h |
| 96 | 3.8.7.2.3 | Review | 1h | 2007-01-16 | 2007-01-16 | 95 | 55.9d |  | Daphne Yu; Thomas Moeller | 2h |
| 97 | 3.8.7.3 | **JPEG/TIFF** | 11.75d | 2007-02-14 | 2007-03-02 |  | 54.96d |  |  | 8h |
| 98 | 3.8.7.3.1 | Create Test | 3h | 2007-03-02 | 2007-03-02 |  | 54.96d |  | Klaus Engel | 3h |
| 99 | 3.8.7.3.2 | Code and Debug | 3h | 2007-02-14 | 2007-02-14 |  | 64.34d | 0d | Klaus Engel | 3h |
| 100 | 3.8.7.3.3 | Review | 1.31h | 2007-02-16 | 2007-02-16 | 99 | 64.34d |  | Klaus Engel; Thomas Moeller | 2h |
| 101 | 3.8.7.4 | **caGrid** | 2.38d | 2007-02-28 | 2007-03-05 | 37 | 54.41d |  |  | 32h |
| 102 | 3.8.7.4.1 | Create Test | 16h | 2007-02-28 | 2007-03-05 |  | 54.41d |  | Junior Developer (Kris) | 16h |
| 103 | 3.8.7.4.2 | Code and Debug | 12h | 2007-02-28 | 2007-03-02 |  | 55.03d | 0d | Siteman | 12h |
| 104 | 3.8.7.4.3 | Review | 2h | 2007-03-02 | 2007-03-02 | 103 | 55.03d |  | Junior Developer (Kris); Lawrence Tarbox | 4h |

Notes:
- 88: Includes sample GUI widgets (replaceable) as well as tie into appropriate library functions

| ID | WBS | Task | Duration | Start | Finish | Predecessors | Total slack | Free slack | Resources | Work |
| --- | --- | --- | --- | --- | --- | --- | --- | --- | --- | --- |
| 105 | 3.8.7.5 | **MIRC** | 3.62d | 2007-01-31 | 2007-02-05 | 89, 93 | 72.46d |  |  | 16h |
| 106 | 3.8.7.5.1 | Create Test | 6h | 2007-02-05 | 2007-02-05 |  | 72.46d |  | Lawrence Tarbox | 6h |
| 107 | 3.8.7.5.2 | Code and Debug | 8h | 2007-01-31 | 2007-02-01 |  | 74.59d | 0d | Lawrence Tarbox | 8h |
| 108 | 3.8.7.5.3 | Review | 2h | 2007-02-01 | 2007-02-01 | 107 | 74.59d |  | Lawrence Tarbox; Senior Developer (Dave or Sasi) | 2h |
| 109 | 3.8.7.6 | **NCI Archive** | 10.52d | 2007-01-22 | 2007-02-06 | 89, 93 | 72.14d |  |  | 32h |
| 110 | 3.8.7.6.1 | Create Test | 12h | 2007-02-02 | 2007-02-06 |  | 72.14d |  | Junior Developer (Kris) | 12h |
| 111 | 3.8.7.6.2 | Code and Debug | 23.53h | 2007-01-22 | 2007-01-25 |  | 77.09d | 0d | Junior Developer (Kris); Lawrence Tarbox [18%]; Net Admin (Stan or Mike) [18%] | 16h |
| 112 | 3.8.7.6.3 | Review | 4h | 2007-01-25 | 2007-01-29 | 111 | 77.09d |  | Junior Developer (Kris); Lawrence Tarbox | 4h |
| 113 | 3.8.7.7 | **Analyze** | 7.38d | 2007-01-30 | 2007-02-09 |  | 69.39d |  |  | 24h |
| 114 | 3.8.7.7.1 | Create Test | 8h | 2007-02-08 | 2007-02-09 |  | 69.39d |  | Junior Developer (Kris) | 8h |
| 115 | 3.8.7.7.2 | Code and Debug | 12h | 2007-01-30 | 2007-01-31 |  | 74.13d | 0d | Junior Developer (Kris) | 12h |
| 116 | 3.8.7.7.3 | Review | 2.61h | 2007-02-01 | 2007-02-01 | 115 | 74.64d |  | Junior Developer (Kris); Lawrence Tarbox | 4h |
| 117 | 3.8.8 | **R3.3 Support multiple output methods** | 33.37d | 2007-01-16 | 2007-03-07 | 84 | 52.16d |  |  | 120h |
| 118 | 3.8.8.1 | **DICOM via network** | 1.25d | 2007-01-17 | 2007-01-18 |  | 79.44d | 4.56d |  | 8h |
| 119 | 3.8.8.1.1 | Create Test | 3h | 2007-01-18 | 2007-01-18 |  | 79.44d |  | Daphne Yu | 3h |
| 120 | 3.8.8.1.2 | Code and Debug | 3h | 2007-01-17 | 2007-01-17 |  | 79.94d | 0d | Daphne Yu | 3h |
| 121 | 3.8.8.1.3 | Review | 2h | 2007-01-17 | 2007-01-18 | 120 | 79.94d |  | Daphne Yu; Gianluca Paladini | 2h |
| 122 | 3.8.8.2 | **DICOM via media** | 2.34d | 2007-01-16 | 2007-01-19 |  | 78.73d | 0d |  | 8h |
| 123 | 3.8.8.2.1 | Create Test | 3h | 2007-01-18 | 2007-01-19 |  | 79.07d |  | Daphne Yu | 3h |
| 124 | 3.8.8.2.2 | Code and Debug | 3h | 2007-01-16 | 2007-01-17 |  | 78.73d | 0d | Daphne Yu | 3h |
| 125 | 3.8.8.2.3 | Review | 2h | 2007-01-18 | 2007-01-19 | 124 | 78.73d |  | Daphne Yu; Thomas Moeller | 2h |
| 126 | 3.8.8.3 | **JPEG/TIFF** | 11.75d | 2007-02-14 | 2007-03-02 |  | 54.59d |  |  | 8h |
| 127 | 3.8.8.3.1 | Create Test | 3h | 2007-03-02 | 2007-03-02 |  | 54.59d |  | Klaus Engel | 3h |
| 128 | 3.8.8.3.2 | Code and Debug | 3h | 2007-02-14 | 2007-02-14 |  | 63.84d | 0d | Klaus Engel | 3h |
| 129 | 3.8.8.3.3 | Review | 2h | 2007-02-16 | 2007-02-19 | 128 | 63.84d |  | Klaus Engel; Thomas Moeller | 2h |

Notes:
- 117: Includes sample GUI widgets (replaceable) as well as tie into appropriate library functions

| ID | WBS | Task | Duration | Start | Finish | Predecessors | Total slack | Free slack | Resources | Work |
| --- | --- | --- | --- | --- | --- | --- | --- | --- | --- | --- |
| 130 | 3.8.8.4 | **caGrid** | 4.62d | 2007-02-28 | 2007-03-07 | 37 | 52.16d |  |  | 32h |
| 131 | 3.8.8.4.1 | Create Test | 16h | 2007-03-05 | 2007-03-07 |  | 52.16d |  | Junior Developer (Kris) | 16h |
| 132 | 3.8.8.4.2 | Code and Debug | 12h | 2007-02-28 | 2007-03-05 |  | 53.87d | 0d | Siteman | 12h |
| 133 | 3.8.8.4.3 | Review | 2h | 2007-03-05 | 2007-03-05 | 132 | 53.87d |  | Junior Developer (Kris); Lawrence Tarbox | 4h |
| 134 | 3.8.8.5 | **MIRC** | 2.88d | 2007-02-01 | 2007-02-06 | 122, 118 | 71.71d |  |  | 16h |
| 135 | 3.8.8.5.1 | Create Test | 6h | 2007-02-05 | 2007-02-06 |  | 71.71d |  | Lawrence Tarbox | 6h |
| 136 | 3.8.8.5.2 | Code and Debug | 8h | 2007-02-01 | 2007-02-02 |  | 73.21d | 0d | Lawrence Tarbox | 8h |
| 137 | 3.8.8.5.3 | Review | 2h | 2007-02-02 | 2007-02-05 | 136 | 73.21d |  | Lawrence Tarbox; Senior Developer (Dave or Sasi) | 2h |
| 138 | 3.8.8.6 | **NCI Archive** | 8.96d | 2007-01-25 | 2007-02-08 | 122, 118 | 70.39d |  |  | 32h |
| 139 | 3.8.8.6.1 | Create Test | 12h | 2007-02-06 | 2007-02-08 |  | 70.39d |  | Junior Developer (Kris) | 12h |
| 140 | 3.8.8.6.2 | Code and Debug | 16h | 2007-01-25 | 2007-01-30 |  | 74.89d | 0d | Junior Developer (Kris) | 16h |
| 141 | 3.8.8.6.3 | Review | 4h | 2007-01-30 | 2007-02-01 | 140 | 74.89d |  | Junior Developer (Kris); Lawrence Tarbox | 4h |
| 142 | 3.8.8.7 | **Analyze** | 5.75d | 2007-02-01 | 2007-02-09 |  | 68.89d |  |  | 16h |
| 143 | 3.8.8.7.1 | Create Test | 4h | 2007-02-09 | 2007-02-09 |  | 68.89d |  | Junior Developer (Kris) | 4h |
| 144 | 3.8.8.7.2 | Code and Debug | 8h | 2007-02-01 | 2007-02-02 |  | 71.89d | 0d | Junior Developer (Kris) | 8h |
| 145 | 3.8.8.7.3 | Review | 4h | 2007-02-02 | 2007-02-06 | 144 | 71.89d |  | Junior Developer (Kris); Lawrence Tarbox | 4h |
| 146 | 3.8.9 | **R4.1 Display/convert formats** | 30d | 2007-01-29 | 2007-03-14 | 93, 74 | 47.73d | 0d |  | 360h |
| 147 | 3.8.9.1 | **R4.1.1 Gray scale W/L adjust** | 1d | 2007-02-16 | 2007-02-19 |  | 61.83d | 2.75d |  | 8h |
| 148 | 3.8.9.1.1 | Create Test | 3h | 2007-02-19 | 2007-02-19 |  | 61.83d |  | Klaus Engel | 3h |
| 149 | 3.8.9.1.2 | Code and Debug | 3h | 2007-02-16 | 2007-02-16 |  | 62.21d | 0d | Klaus Engel | 3h |
| 150 | 3.8.9.1.3 | Review | 1.18h | 2007-02-16 | 2007-02-19 | 149 | 62.21d |  | Klaus Engel; Daphne Yu | 2h |
| 151 | 3.8.9.2 | **R4.1.2 Color (re-)mapping** | 2.88d | 2007-02-22 | 2007-02-27 | 147 | 57.71d |  |  | 8h |
| 152 | 3.8.9.2.1 | Create Test | 3h | 2007-02-27 | 2007-02-27 |  | 57.71d |  | Klaus Engel | 3h |
| 153 | 3.8.9.2.2 | Code and Debug | 3h | 2007-02-22 | 2007-02-22 |  | 59.08d | 0d | Klaus Engel | 3h |
| 154 | 3.8.9.2.3 | Review | 2h | 2007-02-23 | 2007-02-26 | 153 | 59.09d |  | Klaus Engel; Daphne Yu | 2h |

Notes:
- 146: Includes sample GUI widgets (replaceable) as well as tie into appropriate library functions

| ID | WBS | Task | Duration | Start | Finish | Predecessors | Total slack | Free slack | Resources | Work |
| --- | --- | --- | --- | --- | --- | --- | --- | --- | --- | --- |
| 155 | 3.8.9.3 | **R4.1.3 Display info to user** | 6.38d | 2007-02-20 | 2007-03-01 |  | 55.71d |  |  | 8h |
| 156 | 3.8.9.3.1 | Create Test | 3h | 2007-03-01 | 2007-03-01 |  | 55.71d |  | Klaus Engel | 3h |
| 157 | 3.8.9.3.2 | Code and Debug | 3h | 2007-02-20 | 2007-02-21 |  | 60.58d | 0d | Klaus Engel | 3h |
| 158 | 3.8.9.3.3 | Review | 2h | 2007-02-21 | 2007-02-22 | 157 | 60.59d |  | Klaus Engel; Daphne Yu | 2h |
| 159 | 3.8.9.4 | **R4.1.4 Surface rendering** | 4.5d | 2007-02-21 | 2007-02-28 |  | 56.96d |  |  | 16h |
| 160 | 3.8.9.4.1 | Create Test | 6h | 2007-02-27 | 2007-02-28 |  | 56.96d |  | Klaus Engel | 6h |
| 161 | 3.8.9.4.2 | Code and Debug | 6h | 2007-02-21 | 2007-02-22 |  | 59.96d | 0d | Klaus Engel | 6h |
| 162 | 3.8.9.4.3 | Review | 4h | 2007-02-22 | 2007-02-23 | 161 | 59.96d |  | Klaus Engel; Daphne Yu | 4h |
| 163 | 3.8.9.5 | **R4.1.5 Display individual slices, stacks, 3-D volumes, 4-D volumetric time series** | 8d | 2007-02-19 | 2007-03-02 |  | 55.34d |  |  | 8h |
| 164 | 3.8.9.5.1 | Create Test | 3h | 2007-03-01 | 2007-03-02 |  | 55.34d |  | Klaus Engel | 3h |
| 165 | 3.8.9.5.2 | Code and Debug | 3h | 2007-02-19 | 2007-02-20 |  | 62.09d | 0d | Klaus Engel | 3h |
| 166 | 3.8.9.5.3 | Review | 2h | 2007-02-20 | 2007-02-20 | 165 | 62.09d |  | Klaus Engel; Daphne Yu | 2h |
| 167 | 3.8.9.6 | **R4.1.6 Volume rendering** | 13.27d | 2007-01-29 | 2007-02-16 |  | 63.34d | 4.5d |  | 32h |
| 168 | 3.8.9.6.1 | Create Test | 12h | 2007-02-14 | 2007-02-16 |  | 63.34d |  | Klaus Engel | 12h |
| 169 | 3.8.9.6.2 | Code and Debug | 16h | 2007-01-29 | 2007-01-31 |  | 74.36d | 0d | Klaus Engel | 16h |
| 170 | 3.8.9.6.3 | Review | 2h | 2007-01-31 | 2007-01-31 | 169 | 74.36d |  | Klaus Engel; Daphne Yu | 4h |
| 171 | 3.8.9.7 | **R4.1.7 Scroll through or rotate a 3-D view via pointing device** | 6.88d | 2007-02-20 | 2007-03-01 |  | 56.09d |  |  | 16h |
| 172 | 3.8.9.7.1 | Create Test | 6h | 2007-02-28 | 2007-03-01 |  | 56.09d |  | Klaus Engel | 6h |
| 173 | 3.8.9.7.2 | Code and Debug | 6h | 2007-02-20 | 2007-02-20 |  | 61.08d | 0d | Klaus Engel | 6h |
| 174 | 3.8.9.7.3 | Review | 2.85h | 2007-02-21 | 2007-02-21 | 173 | 61.46d |  | Klaus Engel; Daphne Yu | 4h |
| 175 | 3.8.9.8 | **R4.1.8 Cine display** | 10.14d | 2007-01-29 | 2007-02-13 |  | 67.59d |  |  | 8h |
| 176 | 3.8.9.8.1 | Create Test | 3h | 2007-01-30 | 2007-01-30 |  | 76.48d |  | Daphne Yu | 3h |
| 177 | 3.8.9.8.2 | Code and Debug | 3h | 2007-01-29 | 2007-01-29 |  | 67.59d | 0d | Daphne Yu | 3h |
| 178 | 3.8.9.8.3 | Review | 2h | 2007-01-30 | 2007-02-13 | 177 | 67.59d |  | Klaus Engel; Daphne Yu | 2h |

| ID | WBS | Task | Duration | Start | Finish | Predecessors | Total slack | Free slack | Resources | Work |
| --- | --- | --- | --- | --- | --- | --- | --- | --- | --- | --- |
| 179 | 3.8.9.9 | **R4.1.9 Dynamic 4-D display** | 1.88d | 2007-02-23 | 2007-02-27 | 167 | 58.09d |  |  | 16h |
| 180 | 3.8.9.9.1 | Create Test | 6h | 2007-02-26 | 2007-02-27 |  | 58.09d |  | Klaus Engel | 6h |
| 181 | 3.8.9.9.2 | Code and Debug | 6h | 2007-02-23 | 2007-02-26 |  | 58.84d | 0d | Klaus Engel | 6h |
| 182 | 3.8.9.9.3 | Review | 3h | 2007-02-26 | 2007-02-26 | 181 | 58.84d |  | Klaus Engel; Daphne Yu | 4h |
| 183 | 3.8.9.10 | R4.1.10 Hanging protocol support | 240h | 2007-01-29 | 2007-03-14 |  | 47.73d |  |  | 240h |
| 184 | 3.8.10 | **R5.1 Manipulation/Processing** | 18.81d | 2007-01-16 | 2007-02-14 | 93, 70 | 66.71d | 18.98d |  | 296h |
| 185 | 3.8.10.1 | **R5.1.1 Data Conversion** | 1.75d | 2007-01-23 | 2007-01-25 |  | 79.78d |  |  | 16h |
| 186 | 3.8.10.1.1 | Create Test | 6h | 2007-01-24 | 2007-01-25 |  | 79.78d |  | Daphne Yu | 6h |
| 187 | 3.8.10.1.2 | Code and Debug | 6h | 2007-01-23 | 2007-01-24 |  | 80.53d | 0d | Daphne Yu | 6h |
| 188 | 3.8.10.1.3 | Review | 2h | 2007-01-24 | 2007-01-24 | 187 | 80.53d |  | Klaus Engel; Daphne Yu | 4h |
| 189 | 3.8.10.2 | R5.1.2 Image combining/splitting (e.g. 2D->3D->4D->…nD data set) | 80h | 2007-01-16 | 2007-01-31 |  | 75.53d |  |  | 80h |
| 190 | 3.8.10.3 | **R5.1.3 Cropping/Flipping/Rotate/Interpolate** | 6.25d | 2007-01-22 | 2007-01-31 |  | 76.07d |  |  | 24h |
| 191 | 3.8.10.3.1 | Create Test | 8h | 2007-01-30 | 2007-01-31 |  | 76.07d |  | Gianluca Paladini | 8h |
| 192 | 3.8.10.3.2 | Code and Debug | 12h | 2007-01-22 | 2007-01-23 |  | 79.07d | 0d | Gianluca Paladini | 12h |
| 193 | 3.8.10.3.3 | Review | 4h | 2007-01-24 | 2007-01-25 | 192 | 79.07d |  | Gianluca Paladini; Thomas Moeller | 4h |
| 194 | 3.8.10.4 | **R5.1.4 Filters** | 5.88d | 2007-01-24 | 2007-02-01 |  | 74.94d |  |  | 24h |
| 195 | 3.8.10.4.1 | Create Test | 8h | 2007-01-31 | 2007-02-01 |  | 74.94d |  | Gianluca Paladini | 8h |
| 196 | 3.8.10.4.2 | Code and Debug | 12h | 2007-01-24 | 2007-01-25 |  | 78.82d | 0d | Gianluca Paladini | 12h |
| 197 | 3.8.10.4.3 | Review | 4h | 2007-01-25 | 2007-01-26 | 196 | 78.82d |  | Gianluca Paladini; Thomas Moeller | 4h |
| 198 | 3.8.10.5 | **R5.1.5 Morphologic operators** | 4.88d | 2007-01-26 | 2007-02-02 |  | 73.94d |  |  | 24h |
| 199 | 3.8.10.5.1 | Create Test | 8h | 2007-02-01 | 2007-02-02 |  | 73.94d |  | Gianluca Paladini | 8h |
| 200 | 3.8.10.5.2 | Code and Debug | 12h | 2007-01-26 | 2007-01-29 |  | 77.07d | 0d | Gianluca Paladini | 12h |
| 201 | 3.8.10.5.3 | Review | 2h | 2007-01-29 | 2007-01-29 | 200 | 77.07d |  | Gianluca Paladini; Thomas Moeller | 4h |
| 202 | 3.8.10.6 | R5.1.6 Image restoration | 80h | 2007-01-16 | 2007-01-31 |  | 75.53d |  |  | 80h |

Notes:
- 184: Includes sample GUI widgets (replaceable) as well as tie into appropriate library functions
- 189: Need to specify clearly what needs to be implemented.
- 202: Need to specify clearly what needs to be implemented.

| ID | WBS | Task | Duration | Start | Finish | Predecessors | Total slack | Free slack | Resources | Work |
| --- | --- | --- | --- | --- | --- | --- | --- | --- | --- | --- |
| 203 | 3.8.10.7 | **R5.1.7 Segmentation** | 18.81d | 2007-01-16 | 2007-02-14 |  | 66.71d |  |  | 40h |
| 204 | 3.8.10.7.1 | Create Test | 16h | 2007-01-16 | 2007-02-09 |  | 69.47d |  | Klaus Engel | 16h |
| 205 | 3.8.10.7.2 | Code and Debug | 20h | 2007-01-16 | 2007-02-06 |  | 66.71d | 0d | Klaus Engel | 20h |
| 206 | 3.8.10.7.3 | Review | 4h | 2007-02-06 | 2007-02-14 | 205 | 66.71d |  | Klaus Engel; Daphne Yu | 4h |
| 207 | 3.8.10.8 | **R5.1.8 Basic image manipulation: window/level, inverse video, edge enhancement, zoom, pan** | 18.56d | 2007-01-16 | 2007-02-13 |  | 66.96d |  |  | 8h |
| 208 | 3.8.10.8.1 | Create Test | 3h | 2007-01-16 | 2007-02-09 |  | 69.12d |  | Klaus Engel | 3h |
| 209 | 3.8.10.8.2 | Code and Debug | 3h | 2007-01-16 | 2007-02-02 |  | 67.17d | 0d | Klaus Engel | 3h |
| 210 | 3.8.10.8.3 | Review | 2h | 2007-02-02 | 2007-02-13 | 209 | 66.96d |  | Klaus Engel; Daphne Yu | 2h |
| 211 | 3.8.11 | **R6.1 Measurement and Markup - Phase 1** | 18.44d | 2007-01-16 | 2007-02-13 | 93 | 66.94d | 19.36d |  | 32h |
| 212 | 3.8.11.1 | **R6.1.1 Specify ROI** | 18.44d | 2007-01-16 | 2007-02-13 |  | 66.96d |  |  | 8h |
| 213 | 3.8.11.1.1 | Create Test | 3h | 2007-01-16 | 2007-02-09 |  | 68.77d |  | Klaus Engel | 3h |
| 214 | 3.8.11.1.2 | Code and Debug | 3h | 2007-01-16 | 2007-02-01 |  | 66.96d | 0d | Klaus Engel | 3h |
| 215 | 3.8.11.1.3 | Review | 2h | 2007-02-02 | 2007-02-13 | 214 | 67.09d |  | Klaus Engel; Daphne Yu | 2h |
| 216 | 3.8.11.2 | **R6.1.2 Draw 2D line, rectangle, oval, free-hand figure, angles, pixel value, threshold/seed, solid/outline** | 18.06d | 2007-01-16 | 2007-02-13 |  | 67.46d | 8.21d |  | 8h |
| 217 | 3.8.11.2.1 | Create Test | 3h | 2007-01-16 | 2007-02-12 |  | 68.42d |  | Klaus Engel | 3h |
| 218 | 3.8.11.2.2 | Code and Debug | 3h | 2007-01-16 | 2007-01-31 |  | 67.77d | 0d | Klaus Engel | 3h |
| 219 | 3.8.11.2.3 | Review | 2h | 2007-02-01 | 2007-02-13 | 218 | 67.46d |  | Klaus Engel; Daphne Yu | 2h |
| 220 | 3.8.11.3 | **R6.1.3 Draw 3D line, rectangle, oval, free-hand, treshold/seed** | 18.19d | 2007-01-16 | 2007-02-13 |  | 67.34d | 8.08d |  | 8h |
| 221 | 3.8.11.3.1 | Create Test | 3h | 2007-01-16 | 2007-02-12 |  | 68.06d |  | Klaus Engel | 3h |
| 222 | 3.8.11.3.2 | Code and Debug | 3h | 2007-01-16 | 2007-02-01 |  | 67.34d | 0d | Klaus Engel | 3h |
| 223 | 3.8.11.3.3 | Review | 2h | 2007-02-01 | 2007-02-13 | 222 | 67.34d |  | Klaus Engel; Daphne Yu | 2h |
| 224 | 3.8.11.4 | **R6.1.4 Draw regular and irregular polygons as ROI** | 18.31d | 2007-01-16 | 2007-02-13 |  | 66.94d | 7.96d |  | 8h |
| 225 | 3.8.11.4.1 | Create Test | 3h | 2007-01-16 | 2007-02-12 |  | 67.71d |  | Klaus Engel | 3h |
| 226 | 3.8.11.4.2 | Code and Debug | 3h | 2007-01-16 | 2007-02-01 |  | 66.94d | 0d | Klaus Engel | 3h |
| 227 | 3.8.11.4.3 | Review | 2h | 2007-02-02 | 2007-02-13 | 226 | 67.21d |  | Klaus Engel; Daphne Yu | 2h |

Notes:
- 211: Includes sample GUI widgets (replaceable) as well as tie into appropriate library functions

| ID | WBS | Task | Duration | Start | Finish | Predecessors | Total slack | Free slack | Constraint | Resources | Work |
| --- | --- | --- | --- | --- | --- | --- | --- | --- | --- | --- | --- |
| 228 | 3.9 | **2.17.1 Draft Training Materials** | 3.98d | 2007-03-27 | 2007-04-02 | 60, 9 | 115.8d | 97.06d |  |  | 48h |
| 229 | 3.9.1 | Edit | 28h | 2007-03-27 | 2007-04-02 |  | 115.8d | 0d |  | Lawrence Tarbox | 28h |
| 230 | 3.9.2 | Review | 2.86h | 2007-04-02 | 2007-04-02 | 229 | 115.8d |  |  | Daphne Yu; Gianluca Paladini; Junior Developer (Kris); Klaus Engel; Lawrence Tarbox; Senior Developer (Dave or Sasi); Thomas Moeller | 20h |
| 231 | 3.10 | **2.18.1 Draft End-User Guide** | 8.68d | 2007-03-14 | 2007-03-27 | 60 | 67.71d | 0d |  |  | 96h |
| 232 | 3.10.1 | Edit | 65h | 2007-03-14 | 2007-03-26 |  | 67.71d | 0d |  | Lawrence Tarbox | 65h |
| 233 | 3.10.2 | Review | 4.43h | 2007-03-26 | 2007-03-27 | 232 | 67.71d |  |  | Daphne Yu; Gianluca Paladini; Junior Developer (Kris); Klaus Engel; Lawrence Tarbox; Senior Developer (Dave or Sasi); Thomas Moeller | 31h |
| 234 | 4 | **Phase 2 - Add New Features** | 126.24d | 2007-01-02 | 2007-07-12 |  | 52.01d |  | start no earlier than 2007-01-01 |  | 2225.33h |
| 235 | 4.1 | **2.4.2 Final API and API Documentation** | 1.43d | 2007-04-24 | 2007-04-25 | 231, 51, 291 | 65.71d | 0d |  |  | 48h |
| 236 | 4.1.1 | Edit | 9.14h | 2007-04-24 | 2007-04-25 |  | 65.71d | 0d |  | Junior Developer (Kris) [50%]; Senior Developer (Dave or Sasi) [50%]; Lawrence Tarbox; Gianluca Paladini [50%]; Thomas Moeller [50%]; Daphne Yu [50%]; Klaus Engel [50%] | 32h |
| 237 | 4.1.2 | Review | 2.29h | 2007-04-25 | 2007-04-25 | 236 | 65.71d |  |  | Daphne Yu; Gianluca Paladini; Junior Developer (Kris); Klaus Engel; Lawrence Tarbox; Senior Developer (Dave or Sasi); Thomas Moeller | 16h |
| 238 | 4.2 | **2.5.1 XMI file describing data system** | 8.96d | 2007-04-25 | 2007-05-09 | 235 | 65.71d | 0d |  |  | 72h |
| 239 | 4.2.1 | Edit | 52.25h | 2007-04-25 | 2007-05-07 |  | 65.71d | 0d |  | Junior Developer (Kris); Senior Developer (Dave or Sasi) [66%]; Lawrence Tarbox [17%] | 48h |
| 240 | 4.2.2 | Review | 12h | 2007-05-07 | 2007-05-09 | 239 | 65.71d |  |  | Lawrence Tarbox; Senior Developer (Dave or Sasi); Junior Developer (Kris) | 24h |
| 241 | 4.3 | **2.12.2 Final Design Documents** | 11.34d | 2007-05-09 | 2007-05-25 | 238, 54 | 65.71d | 0d |  |  | 64h |
| 242 | 4.3.1 | Edit | 73.95h | 2007-05-09 | 2007-05-24 |  | 65.71d | 0d |  | Daphne Yu; Gianluca Paladini [66%]; Junior Developer (Kris) [17%]; Klaus Engel [33%]; Lawrence Tarbox [33%]; Senior Developer (Dave or Sasi) [17%]; Thomas Moeller | 44h |
| 243 | 4.3.2 | Review | 5.71h | 2007-05-24 | 2007-05-25 | 242 | 65.71d |  |  | Daphne Yu [50%]; Gianluca Paladini; Junior Developer (Kris) [50%]; Klaus Engel [50%]; Lawrence Tarbox; Senior Developer (Dave or Sasi) [50%]; Thomas Moeller [50%] | 20h |
| 244 | 4.4 | **2.6.2 Final Test Approach Document with Requirements Traceability Matrix** | 1.57d | 2007-05-25 | 2007-05-30 | 241, 57 | 69.3d | 0d |  |  | 24h |
| 245 | 4.4.1 | Edit | 8h | 2007-05-25 | 2007-05-29 |  | 69.3d | 0d |  | Lawrence Tarbox | 8h |
| 246 | 4.4.2 | Review | 4.57h | 2007-05-29 | 2007-05-30 | 245 | 69.3d | 0d |  | Daphne Yu [50%]; Gianluca Paladini [50%]; Junior Developer (Kris) [50%]; Klaus Engel [50%]; Lawrence Tarbox; Senior Developer (Dave or Sasi) [50%]; Thomas Moeller [50%] | 16h |
| 247 | 4.5 | **2.7 Test Data Sets** | 4.36d | 2007-05-30 | 2007-06-05 | 244, 5 | 69.3d | 44.41d |  |  | 32h |
| 248 | 4.5.1 | Edit | 21.16h | 2007-05-30 | 2007-06-05 | 246 | 69.3d | 0d |  | Lawrence Tarbox; Thomas Moeller [12%]; Daphne Yu [12%] | 25h |
| 249 | 4.5.2 | Review | 3.03h | 2007-06-05 | 2007-06-05 | 248 | 69.3d |  |  | Daphne Yu [33%]; Gianluca Paladini [33%]; Junior Developer (Kris) [33%]; Klaus Engel [33%]; Lawrence Tarbox; Senior Developer (Dave or Sasi) [33%]; Thomas Moeller [33%] | 7h |
| 250 | 4.6 | **Prototype Code - Phase 2** | 113.71d | 2007-01-02 | 2007-06-22 |  | 64.54d |  |  |  | 1825.33h |
| 251 | 4.6.1 | **R1.2 Incorporate annotation tools, data structures, and vocabulary provided by the Annotation Project** | 14.65d | 2007-02-12 | 2007-03-06 |  | 102.19d | 28.79d |  |  | 120h |
| 252 | 4.6.1.1 | Discussions with annotation team | 24h | 2007-02-12 | 2007-02-15 |  | 102.19d | 0d |  | Lawrence Tarbox | 24h |
| 253 | 4.6.1.2 | Create Test | 40h | 2007-02-26 | 2007-03-06 | 252 | 103.33d |  |  | Senior Developer (Dave or Sasi) | 40h |
| 254 | 4.6.1.3 | Code and Debug | 48.15h | 2007-02-15 | 2007-02-26 | 252 | 108.71d | 0d |  | Senior Developer (Dave or Sasi); Lawrence Tarbox [8%] | 52h |
| 255 | 4.6.1.4 | Review | 2h | 2007-02-26 | 2007-02-26 | 254 | 108.71d |  |  | Junior Developer (Kris); Senior Developer (Dave or Sasi) | 4h |

Notes:
- 235: Includes interactions to gain Adopter and Cross Cutting Workspace Review and Acceptance
- 241: Includes interactions with Cross Cutting Workspaces and Adopters for review
- 244: Includes interactions for Adopter and Architecture Workspace Review
- 247: Includes interactions for Adopter Review

| ID | WBS | Task | Duration | Start | Finish | Predecessors | Total slack | Free slack | Resources | Work |
| --- | --- | --- | --- | --- | --- | --- | --- | --- | --- | --- |
| 256 | 4.6.2 | **R1.3 Incorporate the tools, data structures, and vocabulary provided by Imaging/VCDE work** | 73.19d | 2007-02-27 | 2007-06-18 |  | 68.04d |  |  | 120h |
| 257 | 4.6.2.1 | Discussions with vocabulary team | 32h | 2007-02-27 | 2007-03-06 |  | 69.1d | 0d | Lawrence Tarbox | 32h |
| 258 | 4.6.2.2 | Create Test | 48h | 2007-06-07 | 2007-06-18 | 257 | 68.04d |  | Junior Developer (Kris) | 48h |
| 259 | 4.6.2.3 | Code and Debug | 64.29h | 2007-03-06 | 2007-03-23 | 257 | 108.45d | 0d | Junior Developer (Kris); Lawrence Tarbox [12%] | 36h |
| 260 | 4.6.2.4 | Review | 4h | 2007-03-23 | 2007-04-17 | 259 | 108.45d |  | Junior Developer (Kris); Senior Developer (Dave or Sasi) | 4h |
| 261 | 4.6.3 | **R1.5 Incorporate DICOM WG-23 API** | 44.21d | 2007-01-26 | 2007-04-03 | 61 | 76.7d | 8.99d |  | 240h |
| 262 | 4.6.3.1 | Interact with WG-23 | 86.16h | 2007-01-26 | 2007-02-12 |  | 76.7d | 0d | Lawrence Tarbox; Thomas Moeller [25%] | 40h |
| 263 | 4.6.3.2 | Create Test | 151.17h | 2007-02-12 | 2007-04-03 | 262 | 76.7d |  | Junior Developer (Kris); Thomas Moeller [50%] | 120h |
| 264 | 4.6.3.3 | Code and Debug | 70h | 2007-02-12 | 2007-02-26 | 262 | 100.13d | 0d | Thomas Moeller; Gianluca Paladini [40%] | 56h |
| 265 | 4.6.3.4 | Review | 10.15h | 2007-02-26 | 2007-02-27 | 264 | 100.13d |  | Gianluca Paladini; Lawrence Tarbox; Thomas Moeller | 24h |
| 266 | 4.6.4 | **R1.6 GPWL-based workflow integration** | 8.53d | 2007-01-26 | 2007-02-08 | 61 | 153.5d |  |  | 80h |
| 267 | 4.6.4.1 | Create Test | 47.86h | 2007-01-26 | 2007-02-08 |  | 153.5d |  | Senior Developer (Dave or Sasi); Steve Moore [17%] | 28h |
| 268 | 4.6.4.2 | Code and Debug | 41.28h | 2007-01-26 | 2007-02-08 |  | 153.62d | 0d | Senior Developer (Dave or Sasi); Steve Moore [50%] | 48h |
| 269 | 4.6.4.3 | Review | 2h | 2007-02-08 | 2007-02-08 | 268 | 153.62d |  | Steve Moore; Senior Developer (Dave or Sasi) | 4h |
| 270 | 4.6.5 | **R1.7.1 Query NCI registry of clinical trials, access repository.** | 113.71d | 2007-01-02 | 2007-06-22 |  | 64.54d |  |  | 80h |
| 271 | 4.6.5.1 | Create Test | 28h | 2007-06-18 | 2007-06-22 |  | 64.54d |  | Junior Developer (Kris) | 28h |
| 272 | 4.6.5.2 | Code and Debug | 76.8h | 2007-01-02 | 2007-02-21 |  | 128.04d | 0d | Junior Developer (Kris); Steve Moore [20%]; Net Admin (Stan or Mike) [5%] | 48h |
| 273 | 4.6.5.3 | Review | 4h | 2007-02-21 | 2007-03-19 | 272 | 128.04d |  | Junior Developer (Kris); Steve Moore | 4h |
| 274 | 4.6.6 | **R1.7.2 Incorporate XDS-I framework** | 10.3d | 2007-01-02 | 2007-01-17 |  | 167.95d |  |  | 49.33h |
| 275 | 4.6.6.1 | Create Test | 16h | 2007-01-12 | 2007-01-17 |  | 167.95d |  | Senior Developer (Dave or Sasi) | 16h |
| 276 | 4.6.6.2 | Code and Debug | 36.67h | 2007-01-02 | 2007-01-10 |  | 170.17d | 0d | Senior Developer (Dave or Sasi); Steve Moore [40%]; Net Admin (Stan or Mike) | 29.33h |
| 277 | 4.6.6.3 | Review | 3.39h | 2007-01-10 | 2007-01-12 | 276 | 170.17d |  | Senior Developer (Dave or Sasi); Steve Moore | 4h |
| 278 | 4.6.7 | **R1.8 Incorporate caGrid Security** | 24.22d | 2007-01-02 | 2007-02-07 |  | 154.03d |  |  | 24h |
| 279 | 4.6.7.1 | Create Test | 8h | 2007-01-03 | 2007-01-04 |  | 175.5d |  | Siteman | 8h |
| 280 | 4.6.7.2 | Code and Debug | 12h | 2007-01-02 | 2007-01-03 |  | 154.03d | 0d | Siteman | 12h |
| 281 | 4.6.7.3 | Review | 4h | 2007-01-03 | 2007-02-07 | 280 | 154.03d |  | Lawrence Tarbox; Siteman | 4h |

| ID | WBS | Task | Duration | Start | Finish | Predecessors | Total slack | Free slack | Resources | Work |
| --- | --- | --- | --- | --- | --- | --- | --- | --- | --- | --- |
| 282 | 4.6.8 | **R2.3 Support multiple integration solutions - Phase 2** | 18.5d | 2007-03-27 | 2007-04-24 |  | 65.71d |  |  | 104h |
| 283 | 4.6.8.1 | **R2.3.2 Web server via http** | 1.75d | 2007-03-27 | 2007-03-29 | 231 | 67.71d |  |  | 16h |
| 284 | 4.6.8.1.1 | Create Test | 6h | 2007-03-27 | 2007-03-28 |  | 67.71d | 0d | Daphne Yu | 6h |
| 285 | 4.6.8.1.2 | Code and Debug | 6h | 2007-03-28 | 2007-03-29 | 284 | 67.71d | 0d | Daphne Yu | 6h |
| 286 | 4.6.8.1.3 | Review | 2h | 2007-03-29 | 2007-03-29 | 285 | 67.71d | 0d | Daphne Yu; Thomas Moeller | 4h |
| 287 | 4.6.8.2 | **R2.3.3 Grid-service** | 11.86d | 2007-03-29 | 2007-04-17 | 286 | 67.71d |  |  | 48h |
| 288 | 4.6.8.2.1 | Create Test | 50h | 2007-03-29 | 2007-04-10 |  | 67.71d | 0d | Senior Developer (Dave or Sasi); Lawrence Tarbox [25%] | 20h |
| 289 | 4.6.8.2.2 | Code and Debug | 31.58h | 2007-04-10 | 2007-04-16 | 288 | 67.71d | 0d | Senior Developer (Dave or Sasi); Lawrence Tarbox [38%] | 24h |
| 290 | 4.6.8.2.3 | Review | 2h | 2007-04-16 | 2007-04-17 | 289 | 67.71d | 0d | Senior Developer (Dave or Sasi); Lawrence Tarbox | 4h |
| 291 | 4.6.8.3 | **R2.3.4 Imaging Workstation plug-in** | 4.89d | 2007-04-17 | 2007-04-24 | 261, 290 | 65.71d | 0d |  | 40h |
| 292 | 4.6.8.3.1 | Create Test | 16h | 2007-04-20 | 2007-04-24 |  | 65.71d |  | Daphne Yu | 16h |
| 293 | 4.6.8.3.2 | Code and Debug | 20h | 2007-04-17 | 2007-04-19 |  | 67.71d | 0d | Daphne Yu | 20h |
| 294 | 4.6.8.3.3 | Review | 3.14h | 2007-04-19 | 2007-04-20 | 293 | 67.71d |  | Daphne Yu; Gianluca Paladini | 4h |
| 295 | 4.6.9 | **R6.1 Measurement and Markup - Phase 2** | 99.03d | 2007-01-19 | 2007-06-19 |  | 67.53d |  |  | 472h |
| 296 | 4.6.9.1 | **R6.1.5 Store/Display Imaging Workspace Annotation Markup Standard** | 20.27d | 2007-04-18 | 2007-05-17 | 122, 251 | 67.53d | 0d |  | 120h |
| 297 | 4.6.9.1.1 | Create Test | 48h | 2007-05-09 | 2007-05-17 |  | 67.53d |  | Junior Developer (Kris) | 48h |
| 298 | 4.6.9.1.2 | Code and Debug | 64h | 2007-04-18 | 2007-05-02 |  | 74.53d | 0d | Junior Developer (Kris) | 64h |
| 299 | 4.6.9.1.3 | Review | 8h | 2007-05-02 | 2007-05-08 | 298 | 74.53d |  | Junior Developer (Kris); Lawrence Tarbox | 8h |
| 300 | 4.6.9.2 | R6.1.6 DICOM CAD object input/ouput | 160h | 2007-05-17 | 2007-06-19 | 296 | 67.53d |  |  | 160h |
| 301 | 4.6.9.3 | **R6.1.7 Real-world dimensions, intensity values, compute mean and standard deviation** | 4.75d | 2007-02-26 | 2007-03-05 | 216, 220, 224 | 137.87d |  |  | 32h |
| 302 | 4.6.9.3.1 | Create Test | 12h | 2007-02-26 | 2007-03-05 |  | 137.87d |  | Gianluca Paladini | 12h |
| 303 | 4.6.9.3.2 | Code and Debug | 16h | 2007-02-26 | 2007-03-01 |  | 139.25d | 0d | Gianluca Paladini | 16h |
| 304 | 4.6.9.3.3 | Review | 2h | 2007-03-01 | 2007-03-01 | 303 | 139.25d |  | Gianluca Paladini; Thomas Moeller | 4h |
| 305 | 4.6.9.4 | **R6.1.8 Import/Export presentation state objects with text annotations, graphic annotations, measurements, and ROIs** | 23.39d | 2007-01-19 | 2007-02-23 | 122 | 143.17d |  |  | 80h |
| 306 | 4.6.9.4.1 | Create Test | 32h | 2007-02-08 | 2007-02-15 |  | 149d |  | Senior Developer (Dave or Sasi) | 32h |
| 307 | 4.6.9.4.2 | Code and Debug | 40h | 2007-01-19 | 2007-01-26 |  | 143.62d | 0d | Senior Developer (Dave or Sasi) | 40h |
| 308 | 4.6.9.4.3 | Review | 8h | 2007-02-08 | 2007-02-23 | 307 | 143.17d |  | Senior Developer (Dave or Sasi); Junior Developer (Kris) | 8h |
| 309 | 4.6.9.5 | R6.1.9 Track which user made what annotations | 80h | 2007-05-17 | 2007-06-04 | 296 | 77.53d |  |  | 80h |

| ID | WBS | Task | Duration | Start | Finish | Predecessors | Total slack | Free slack | Resources | Work |
| --- | --- | --- | --- | --- | --- | --- | --- | --- | --- | --- |
| 310 | 4.6.10 | **R7.1 Collaborative view on different workstations of multiple images, presentation states, etc. with observable changes on both ends** | 56.78d | 2007-03-14 | 2007-06-07 | 146, 184, 211 | 74.33d |  |  | 136h |
| 311 | 4.6.10.1 | Create Test | 48h | 2007-05-29 | 2007-06-07 |  | 74.33d |  | Junior Developer (Kris) | 48h |
| 312 | 4.6.10.2 | Code and Debug | 80h | 2007-03-14 | 2007-04-17 |  | 107.81d | 0d | Junior Developer (Kris) | 80h |
| 313 | 4.6.10.3 | Review | 7.14h | 2007-04-17 | 2007-04-18 | 312 | 107.81d |  | Junior Developer (Kris); Senior Developer (Dave or Sasi) | 8h |
| 314 | 4.6.11 | **R8.1 Support anonymization** | 25.15d | 2007-01-02 | 2007-02-09 |  | 152.28d |  |  | 32h |
| 315 | 4.6.11.1 | Create Test | 6h | 2007-01-08 | 2007-01-23 |  | 164.68d |  | Thomas Moeller | 6h |
| 316 | 4.6.11.2 | Code and Debug | 33h | 2007-01-02 | 2007-02-07 |  | 152.28d | 0d | Thomas Moeller [50%]; Lawrence Tarbox | 22h |
| 317 | 4.6.11.3 | Review | 4h | 2007-02-08 | 2007-02-09 | 316 | 152.46d |  | Thomas Moeller; Gianluca Paladini | 4h |
| 318 | 4.6.12 | **R8.2 Add data into 'header', e.g. voxel size** | 42.79d | 2007-01-05 | 2007-03-13 |  | 132.07d |  |  | 32h |
| 319 | 4.6.12.1 | Create Test | 8h | 2007-01-08 | 2007-02-08 |  | 153.1d |  | Thomas Moeller | 8h |
| 320 | 4.6.12.2 | Code and Debug | 20.18h | 2007-01-05 | 2007-02-21 |  | 132.07d | 0d | Thomas Moeller; Junior Developer (Kris) [66%] | 20h |
| 321 | 4.6.12.3 | Review | 4h | 2007-02-22 | 2007-03-13 | 320 | 132.07d |  | Thomas Moeller; Klaus Engel | 4h |
| 322 | 4.6.13 | **R8.3 Support audit logging** | 22.02d | 2007-01-04 | 2007-02-08 |  | 153.75d |  |  | 32h |
| 323 | 4.6.13.1 | Create Test | 12h | 2007-01-17 | 2007-01-26 |  | 161.45d |  | Senior Developer (Dave or Sasi) | 12h |
| 324 | 4.6.13.2 | Code and Debug | 16h | 2007-01-04 | 2007-01-10 |  | 154.15d | 0d | Senior Developer (Dave or Sasi) | 16h |
| 325 | 4.6.13.3 | Review | 4h | 2007-01-12 | 2007-02-08 | 324 | 153.75d |  | Senior Developer (Dave or Sasi); Lawrence Tarbox | 4h |
| 326 | 4.6.14 | **R8.4 Scripting/macro language support in addition to plug-ins** | 28.69d | 2007-01-03 | 2007-02-15 |  | 148.34d |  |  | 80h |
| 327 | 4.6.14.1 | Create Test | 32h | 2007-02-08 | 2007-02-15 |  | 148.34d |  | Daphne Yu | 32h |
| 328 | 4.6.14.2 | Code and Debug | 40h | 2007-01-03 | 2007-02-02 |  | 153.52d | 0d | Daphne Yu | 40h |
| 329 | 4.6.14.3 | Review | 8h | 2007-02-02 | 2007-02-08 | 328 | 153.52d |  | Daphne Yu; Thomas Moeller | 8h |
| 330 | 4.6.15 | **R8.5 User assignment of functions to keystrokes** | 45.46d | 2007-01-03 | 2007-03-13 |  | 131.57d |  |  | 80h |
| 331 | 4.6.15.1 | Create Test | 32h | 2007-01-10 | 2007-03-12 |  | 132.32d |  | Klaus Engel | 32h |
| 332 | 4.6.15.2 | Code and Debug | 40h | 2007-01-03 | 2007-03-06 |  | 131.57d | 0d | Klaus Engel | 40h |
| 333 | 4.6.15.3 | Review | 8h | 2007-03-06 | 2007-03-13 | 332 | 131.57d |  | Thomas Moeller; Klaus Engel | 8h |

Notes:
- 310: Includes sample GUI widgets (replaceable) as well as tie into appropriate library functions

| ID | WBS | Task | Duration | Start | Finish | Predecessors | Total slack | Free slack | Resources | Work |
| --- | --- | --- | --- | --- | --- | --- | --- | --- | --- | --- |
| 334 | 4.6.16 | **R8.6 Multi-level undo** | 21.55d | 2007-02-02 | 2007-03-07 |  | 135.97d |  |  | 40h |
| 335 | 4.6.16.1 | Create Test | 16h | 2007-02-15 | 2007-02-20 |  | 145.86d |  | Daphne Yu | 16h |
| 336 | 4.6.16.2 | Code and Debug | 20h | 2007-02-02 | 2007-02-07 |  | 135.97d | 0d | Daphne Yu | 20h |
| 337 | 4.6.16.3 | Review | 4h | 2007-02-07 | 2007-03-07 | 336 | 135.97d |  | Daphne Yu; Klaus Engel | 4h |
| 338 | 4.6.17 | **R8.7 Run as applet in a web-browser or run as full application [Java]** | 30.36d | 2007-01-10 | 2007-02-26 |  | 141.73d |  |  | 24h |
| 339 | 4.6.17.1 | Create Test | 8h | 2007-02-15 | 2007-02-26 |  | 141.73d |  | Senior Developer (Dave or Sasi) | 8h |
| 340 | 4.6.17.2 | Code and Debug | 12h | 2007-01-10 | 2007-01-12 |  | 144.17d | 0d | Senior Developer (Dave or Sasi) | 12h |
| 341 | 4.6.17.3 | Review | 4h | 2007-01-12 | 2007-02-22 | 340 | 144.17d |  | Junior Developer (Kris); Senior Developer (Dave or Sasi) | 4h |
| 342 | 4.6.18 | **R8.8 Help pages, either locally installed or installed on web** | 33.37d | 2007-01-03 | 2007-02-22 |  | 143.67d |  |  | 80h |
| 343 | 4.6.18.1 | Create Test | 32h | 2007-01-10 | 2007-02-09 |  | 152.71d |  | Gianluca Paladini | 32h |
| 344 | 4.6.18.2 | Code and Debug | 40h | 2007-01-03 | 2007-02-05 |  | 143.67d | 0d | Gianluca Paladini | 40h |
| 345 | 4.6.18.3 | Review | 8h | 2007-02-05 | 2007-02-22 | 344 | 143.67d |  | Thomas Moeller; Junior Developer (Kris) | 8h |
| 346 | 4.7 | **2.13.1 Draft Techincal/Architecture Guide** | 10.26d | 2007-05-25 | 2007-06-12 | 241 | 65.79d | 40.73d |  | 64h |
| 347 | 4.7.1 | Edit | 79.84h | 2007-05-25 | 2007-06-12 |  | 65.79d | 0d | Daphne Yu [8%]; Gianluca Paladini [8%]; Junior Developer (Kris); Klaus Engel [8%]; Lawrence Tarbox [33%]; Senior Developer (Dave or Sasi) [17%]; Thomas Moeller [8%]; Steve Moore [17%] | 48h |
| 348 | 4.7.2 | Review | 2.27h | 2007-06-12 | 2007-06-12 | 347 | 65.79d |  | Daphne Yu; Gianluca Paladini; Junior Developer (Kris); Klaus Engel; Lawrence Tarbox; Senior Developer (Dave or Sasi); Thomas Moeller; Steve Moore | 16h |
| 349 | 4.8 | **2.14.1 Draft Installation Guide** | 79.09d | 2007-03-14 | 2007-07-12 | 60 | 47.73d | 20.16d |  | 32h |
| 350 | 4.8.1 | Edit | 58.33h | 2007-03-14 | 2007-07-12 |  | 47.73d | 0d | Paul Koppel; Lawrence Tarbox [40%] | 25h |
| 351 | 4.8.2 | Review | 0.88h | 2007-07-12 | 2007-07-12 | 350 | 47.73d |  | Daphne Yu; Gianluca Paladini; Junior Developer (Kris); Klaus Engel; Lawrence Tarbox; Senior Developer (Dave or Sasi); Thomas Moeller; Paul Koppel | 7h |
| 352 | 4.9 | **2.15.1 Draft Administration Guide** | 14.9d | 2007-04-10 | 2007-05-02 | 60 | 93.94d | 66.26d |  | 32h |
| 353 | 4.9.1 | Edit | 24h | 2007-04-10 | 2007-04-19 |  | 93.94d | 0d | Lawrence Tarbox | 24h |
| 354 | 4.9.2 | Review | 2.93h | 2007-04-19 | 2007-05-02 | 353 | 93.94d |  | Daphne Yu; Gianluca Paladini; Junior Developer (Kris); Klaus Engel; Lawrence Tarbox; Senior Developer (Dave or Sasi); Thomas Moeller | 8h |
| 355 | 4.10 | **2.16.1 Draft Release Notes** | 22.79d | 2007-03-14 | 2007-04-17 | 60 | 106.58d | 76.46d |  | 32h |
| 356 | 4.10.1 | Edit | 68.57h | 2007-03-14 | 2007-04-10 |  | 106.58d | 0d | Daphne Yu [10%]; Gianluca Paladini [10%]; Junior Developer (Kris) [10%]; Klaus Engel [10%]; Lawrence Tarbox; Senior Developer (Dave or Sasi) [10%]; Thomas Moeller [10%] | 24h |
| 357 | 4.10.2 | Review | 2.29h | 2007-04-10 | 2007-04-17 | 356 | 106.58d |  | Daphne Yu; Gianluca Paladini; Junior Developer (Kris); Klaus Engel; Lawrence Tarbox; Senior Developer (Dave or Sasi); Thomas Moeller | 8h |

| ID | WBS | Task | Duration | Start | Finish | Predecessors | Total slack | Free slack | Constraint | Resources | Work |
| --- | --- | --- | --- | --- | --- | --- | --- | --- | --- | --- | --- |
| 358 | 5 | **Phase 3 - Finalization** | 22.63d | 2007-07-30 | 2007-08-31 |  | 18.74d |  | start no earlier than 2007-07-30 |  | 568h |
| 359 | 5.1 | **2.5.2 Full CDE Use Report** | 4.84d | 2007-08-07 | 2007-08-14 | 238 | 27.24d | 1.89d |  |  | 32h |
| 360 | 5.1.1 | Edit | 26.23h | 2007-08-07 | 2007-08-10 |  | 27.24d | 0d |  | Junior Developer (Kris); Lawrence Tarbox [50%]; Senior Developer (Dave or Sasi) [33%] | 24h |
| 361 | 5.1.2 | Review | 5.88h | 2007-08-10 | 2007-08-14 | 360 | 27.24d |  |  | Lawrence Tarbox; Junior Developer (Kris) [50%]; Senior Developer (Dave or Sasi) [50%] | 8h |
| 362 | 5.2 | 2.10 Final Code | 76.19h | 2007-07-30 | 2007-08-13 | 60, 241 | 24.88d | 0d |  | Daphne Yu [60%]; Gianluca Paladini [60%]; Junior Developer (Kris); Klaus Engel [60%]; Lawrence Tarbox [75%]; Senior Developer (Dave or Sasi) [75%]; Thomas Moeller [60%] | 320h |
| 363 | 5.3 | **2.8 Test Results Report** | 3.05d | 2007-08-13 | 2007-08-16 | 247, 362 | 24.88d | 0d |  |  | 24h |
| 364 | 5.3.1 | Edit | 5.14h | 2007-08-13 | 2007-08-13 |  | 24.88d | 0d |  | Daphne Yu; Gianluca Paladini; Junior Developer (Kris) [50%]; Klaus Engel; Lawrence Tarbox [50%]; Senior Developer (Dave or Sasi) [50%]; Thomas Moeller | 18h |
| 365 | 5.3.2 | Review | 1.71h | 2007-08-13 | 2007-08-16 | 364 | 24.88d |  |  | Daphne Yu; Gianluca Paladini; Junior Developer (Kris); Klaus Engel; Lawrence Tarbox; Senior Developer (Dave or Sasi); Thomas Moeller | 6h |
| 366 | 5.4 | 2.11 Compatibility Review Submission Package | 27.68h | 2007-08-16 | 2007-08-22 | 9, 29, 241, 48, 238, 359, 235, 363, 244, 42 | 25.34d |  |  | Junior Developer (Kris); Lawrence Tarbox [50%] | 24h |
| 367 | 5.5 | **2.13.2 Final Technical/Architecture Guide** | 6.15d | 2007-08-13 | 2007-08-22 | 346, 362 | 25.06d |  |  |  | 32h |
| 368 | 5.5.1 | Edit | 16h | 2007-08-13 | 2007-08-17 |  | 25.06d | 0d |  | Lawrence Tarbox; Junior Developer (Kris) | 16h |
| 369 | 5.5.2 | Review | 6.86h | 2007-08-17 | 2007-08-22 | 368 | 25.06d |  |  | Daphne Yu; Gianluca Paladini; Junior Developer (Kris); Klaus Engel; Lawrence Tarbox; Senior Developer (Dave or Sasi); Thomas Moeller | 16h |
| 370 | 5.6 | **2.14.2 Final Installation Guide** | 4.28d | 2007-08-13 | 2007-08-17 | 349, 362 | 27.57d |  |  |  | 16h |
| 371 | 5.6.1 | Edit | 11.25h | 2007-08-13 | 2007-08-16 |  | 27.57d | 0d |  | Paul Koppel; Lawrence Tarbox [40%] | 9h |
| 372 | 5.6.2 | Review | 1.75h | 2007-08-16 | 2007-08-17 | 371 | 27.57d |  |  | Daphne Yu; Gianluca Paladini; Junior Developer (Kris); Klaus Engel; Lawrence Tarbox; Senior Developer (Dave or Sasi); Thomas Moeller; Paul Koppel | 7h |
| 373 | 5.7 | **2.15.2 Final Administration Guide** | 4.17d | 2007-08-13 | 2007-08-17 | 352, 362 | 27.68d |  |  |  | 16h |
| 374 | 5.7.1 | Edit | 16.36h | 2007-08-13 | 2007-08-15 |  | 27.68d | 0d |  | Lawrence Tarbox; Daphne Yu [10%] | 9h |
| 375 | 5.7.2 | Review | 2h | 2007-08-15 | 2007-08-17 | 374 | 27.68d |  |  | Daphne Yu; Gianluca Paladini; Junior Developer (Kris); Klaus Engel; Lawrence Tarbox; Senior Developer (Dave or Sasi); Thomas Moeller | 7h |
| 376 | 5.8 | **2.16.2 Final Release Notes** | 1.73d | 2007-08-13 | 2007-08-15 | 355, 362 | 30.12d |  |  |  | 8h |
| 377 | 5.8.1 | Edit | 4.5h | 2007-08-13 | 2007-08-14 |  | 30.12d | 0d |  | Daphne Yu [50%]; Lawrence Tarbox | 3h |
| 378 | 5.8.2 | Review | 1.43h | 2007-08-14 | 2007-08-15 | 377 | 30.12d |  |  | Daphne Yu; Gianluca Paladini; Junior Developer (Kris); Klaus Engel; Lawrence Tarbox; Senior Developer (Dave or Sasi); Thomas Moeller | 5h |
| 379 | 5.9 | **2.17.2 Final Training Materials** | 2.64d | 2007-08-28 | 2007-08-31 | 228, 362 | 18.74d |  |  |  | 32h |
| 380 | 5.9.1 | Edit | 16h | 2007-08-28 | 2007-08-30 |  | 18.74d | 0d |  | Lawrence Tarbox | 16h |
| 381 | 5.9.2 | Review | 4.57h | 2007-08-30 | 2007-08-31 | 380 | 18.74d |  |  | Daphne Yu; Gianluca Paladini; Junior Developer (Kris); Klaus Engel; Lawrence Tarbox; Senior Developer (Dave or Sasi); Thomas Moeller | 16h |

Notes:
- 366: Includes interactions with VCDE and ARCH workspace for reviews
- 367: Includes interactions for review
- 370: Includes interactions for Training Review and Acceptance
- 373: Includes interactions for Training Review and Acceptance
- 379: Includes interactions for Training Review and Acceptance

| ID | WBS | Task | Duration | Start | Finish | Predecessors | Total slack | Free slack | Constraint | Resources | Work |
| --- | --- | --- | --- | --- | --- | --- | --- | --- | --- | --- | --- |
| 382 | 5.10 | **2.18.2 Final End-User Guide** | 5.86d | 2007-08-22 | 2007-08-30 | 231, 362 | 19.03d |  |  |  | 48h |
| 383 | 5.10.1 | Edit | 28h | 2007-08-22 | 2007-08-28 |  | 19.03d | 0d |  | Lawrence Tarbox | 28h |
| 384 | 5.10.2 | Review | 5.71h | 2007-08-28 | 2007-08-30 | 383 | 19.03d |  |  | Daphne Yu; Gianluca Paladini; Junior Developer (Kris); Klaus Engel; Lawrence Tarbox; Senior Developer (Dave or Sasi); Thomas Moeller | 20h |
| 385 | 5.11 | **1.6 Lessons Learned Document** | 3.92d | 2007-08-16 | 2007-08-22 | 363 | 24.88d |  |  |  | 16h |
| 386 | 5.11.1 | Edit | 3.6h | 2007-08-16 | 2007-08-17 |  | 24.88d | 0d |  | Gianluca Paladini; Junior Developer (Kris); Klaus Engel; Lawrence Tarbox; Senior Developer (Dave or Sasi) | 9h |
| 387 | 5.11.2 | Review | 4.2h | 2007-08-17 | 2007-08-22 | 386 | 24.88d |  |  | Gianluca Paladini; Junior Developer (Kris); Klaus Engel; Lawrence Tarbox; Senior Developer (Dave or Sasi) | 7h |
| 388 | 6 | **1.3 Monthly Status Report and Risk Matrix** | 215.75d | 2006-11-01 | 2007-10-01 |  | 0d |  |  |  | 84h |
| 389 | 6.1 | 1.3 Monthly Status Report and Risk Matrix 1 | 1h | 2006-11-01 | 2006-11-01 |  | 215.62d |  | start no earlier than 2006-11-01 | Daphne Yu; Gianluca Paladini; Junior Developer (Kris); Klaus Engel; Lawrence Tarbox; Senior Developer (Dave or Sasi); Thomas Moeller | 7h |
| 390 | 6.2 | 1.3 Monthly Status Report and Risk Matrix 2 | 1h | 2006-12-01 | 2006-12-01 |  | 196.88d |  | start no earlier than 2006-12-01 | Daphne Yu; Gianluca Paladini; Junior Developer (Kris); Klaus Engel; Lawrence Tarbox; Senior Developer (Dave or Sasi); Thomas Moeller | 7h |
| 391 | 6.3 | 1.3 Monthly Status Report and Risk Matrix 3 | 1h | 2007-01-02 | 2007-01-02 |  | 178.12d |  | start no earlier than 2007-01-01 | Daphne Yu; Gianluca Paladini; Junior Developer (Kris); Klaus Engel; Lawrence Tarbox; Senior Developer (Dave or Sasi); Thomas Moeller | 7h |
| 392 | 6.4 | 1.3 Monthly Status Report and Risk Matrix 4 | 1h | 2007-02-01 | 2007-02-01 |  | 158.44d |  | start no earlier than 2007-02-01 | Daphne Yu; Gianluca Paladini; Junior Developer (Kris); Klaus Engel; Lawrence Tarbox; Senior Developer (Dave or Sasi); Thomas Moeller | 7h |
| 393 | 6.5 | 1.3 Monthly Status Report and Risk Matrix 5 | 1h | 2007-03-01 | 2007-03-01 |  | 139.69d |  | start no earlier than 2007-03-01 | Daphne Yu; Gianluca Paladini; Junior Developer (Kris); Klaus Engel; Lawrence Tarbox; Senior Developer (Dave or Sasi); Thomas Moeller | 7h |
| 394 | 6.6 | 1.3 Monthly Status Report and Risk Matrix 6 | 1h | 2007-04-02 | 2007-04-02 |  | 119.06d |  | start no earlier than 2007-04-01 | Daphne Yu; Gianluca Paladini; Junior Developer (Kris); Klaus Engel; Lawrence Tarbox; Senior Developer (Dave or Sasi); Thomas Moeller | 7h |
| 395 | 6.7 | 1.3 Monthly Status Report and Risk Matrix 7 | 1h | 2007-05-01 | 2007-05-01 |  | 99.38d |  | start no earlier than 2007-05-01 | Daphne Yu; Gianluca Paladini; Junior Developer (Kris); Klaus Engel; Lawrence Tarbox; Senior Developer (Dave or Sasi); Thomas Moeller | 7h |
| 396 | 6.8 | 1.3 Monthly Status Report and Risk Matrix 8 | 1h | 2007-06-01 | 2007-06-01 |  | 78.75d |  | start no earlier than 2007-06-01 | Daphne Yu; Gianluca Paladini; Junior Developer (Kris); Klaus Engel; Lawrence Tarbox; Senior Developer (Dave or Sasi); Thomas Moeller | 7h |
| 397 | 6.9 | 1.3 Monthly Status Report and Risk Matrix 9 | 1h | 2007-07-02 | 2007-07-02 |  | 59.06d |  | start no earlier than 2007-07-01 | Daphne Yu; Gianluca Paladini; Junior Developer (Kris); Klaus Engel; Lawrence Tarbox; Senior Developer (Dave or Sasi); Thomas Moeller | 7h |
| 398 | 6.10 | 1.3 Monthly Status Report and Risk Matrix 10 | 1h | 2007-08-01 | 2007-08-01 |  | 39.38d |  | start no earlier than 2007-08-01 | Daphne Yu; Gianluca Paladini; Junior Developer (Kris); Klaus Engel; Lawrence Tarbox; Senior Developer (Dave or Sasi); Thomas Moeller | 7h |
| 399 | 6.11 | 1.3 Monthly Status Report and Risk Matrix 11 | 1h | 2007-09-04 | 2007-09-04 |  | 17.81d |  | start no earlier than 2007-09-01 | Daphne Yu; Gianluca Paladini; Junior Developer (Kris); Klaus Engel; Lawrence Tarbox; Senior Developer (Dave or Sasi); Thomas Moeller | 7h |
| 400 | 6.12 | 1.3 Monthly Status Report and Risk Matrix 12 | 1h | 2007-10-01 | 2007-10-01 |  | 0d |  | start no earlier than 2007-10-01 | Daphne Yu; Gianluca Paladini; Junior Developer (Kris); Klaus Engel; Lawrence Tarbox; Senior Developer (Dave or Sasi); Thomas Moeller | 7h |

Notes:
- 382: Includes interactions for Training Review and Acceptance
